# lab2upsis

How a schedule from ProjectLibre changed from version to version. A marks actual dates.

## Version 1 (saved 2026-06-10)

| ID | WBS | Task | Duration | Start | Finish | Predecessors | Complete | Constraint |
| --- | --- | --- | --- | --- | --- | --- | --- | --- |
| 1 | 1 | **Управление проектом** | 15d | 2026-02-02 | 2026-02-20 |  | 100% |  |
| 2 |  | Планирование и координация команды | 0d | 2026-02-02 | 2026-02-02 | 6SS, 27FF | 100% | start no later than 2026-09-01 |
| 3 |  | Управление рисками и коммуникация с заказчиками | 10d | 2026-02-09 | 2026-02-20 | 2SS | 100% |  |
| 4 |  | Подготовка отчетной документации | 3d | 2026-02-16 | 2026-02-18 | 8, 10FF, 15FF, 25SF | 100% |  |
| 5 | 2 | **Анализ и обследование** | 17d | 2026-02-23 | 2026-03-17 |  | 91% |  |
| 6 |  | Изучение производственных и логистических процессов | 17d | 2026-02-23 | 2026-03-17 |  | 100% |  |
| 7 |  | Сбор требований к функционалу | 5d | 2026-02-23 | 2026-02-27 | 6SS+2d | 50% |  |
| 8 |  | Формирование технического задания (ТЗ) | 5d | 2026-02-23 | 2026-02-27 | 6, 7SS+3d | 100% |  |
| 9 |  | ТЗ Утверждено | 17d | 2026-02-23 | 2026-03-17 | 8 | 88% |  |
| 10 | 4 | **Проектирование** | 136d | 2026-02-23 | 2026-09-01 |  | 100% |  |
| 11 |  | Проектирование архитектуры и интеграционного слоя | 10d | 2026-03-06 | 2026-03-19 | 8 | 100% |  |
| 12 |  | Проектирование экономической модели | 0d | 2026-02-23 | 2026-02-23 | 8 | 100% |  |
| 13 |  | Разработка математических моделей оптимизации | 10d | 2026-03-06 | 2026-03-19 | 8 | 100% |  |
| 14 |  | Проектирование завершено | 0d | 2026-02-23 | 2026-09-01 | 11, 12, 13 |  |  |
| 15 | 5 | **Разработка и интеграция** | 38d | 2026-02-23 | 2026-04-15 |  | 100% |  |
| 16 |  | Разработка интеграционного слоя | 25d | 2026-02-23 | 2026-03-27 | 11 | 100% |  |
| 17 |  | Разработка слоя хранения данных (MDM/DWH) | 15d | 2026-02-23 | 2026-03-13 | 13, 11, 12 | 100% |  |
| 18 |  | Реализация модуля экономической модели | 15d | 2026-03-02 | 2026-03-20 | 17, 12 | 100% |  |
| 19 |  | Реализация модуля ИИ-планирования (сценарии) | 25d | 2026-03-09 | 2026-04-10 | 17SS+3d, 13SS+3d | 100% |  |
| 20 |  | Разработка веб-интерфейсов и панелей | 23d | 2026-03-16 | 2026-04-15 | 19, 18 | 100% |  |
| 21 |  | MVP завершен | 0d | 2026-03-23 | 2026-03-23 | 16, 17, 18, 19, 20 | 100% |  |
| 22 | 6 | **Тестирование и внедрение** | 38d | 2026-09-01 | 2026-10-22 |  |  |  |
| 23 |  | Настройка тестовых сред (инфраструктура) | 8d | 2026-09-01 | 2026-09-10 | 11 |  |  |
| 24 |  | Функциональное и интеграционное тестирование | 20d | 2026-09-11 | 2026-10-08 | 23, 20, 16, 17, 18, 19 |  |  |
| 25 |  | Развертывание системы (пилотные внедрения) | 10d | 2026-10-09 | 2026-10-22 | 24 |  |  |
| 26 |  | Пилот запущен | 0d | 2026-10-22 | 2026-10-22 | 25 |  |  |
| 27 |  | Буферная работа (непредвиденные сбои на пилотах) | 8d | 2026-10-23 | 2026-11-03 | 25 |  |  |
| 28 |  | Пилот завершен | 0d | 2026-11-03 | 2026-11-03 | 27 |  |  |

## Version 2 (data date 2026-10-10, saved 2026-06-15)

Last finish 2026-11-03 → 2027-02-02 (+91d). Complete tasks 14 → 6.

Changed:

| ID | Task | Start | Finish | Duration | Complete | Other |
| --- | --- | --- | --- | --- | --- | --- |
| 1 | **Управление проектом** | 2026-02-02 → 2026-09-01 A (+211d) | 2026-02-20 → 2027-01-07 (+321d) | 15d → 93d | 100% → 35% | baseline start none → 2026-09-01; baseline finish none → 2027-01-07 |
| 2 | Планирование и координация команды | 2026-02-02 → 2026-09-01 A (+211d) | 2026-02-02 → 2026-09-21 A (+231d) | 0d → 15d |  | resources Тимлид → Руководитель проекта / тимлид; baseline start none → 2026-09-01; baseline finish none → 2026-09-21 |
| 3 | Управление рисками и коммуникация с заказчиками | 2026-02-09 → 2026-09-01 A (+204d) | 2026-02-20 → 2026-09-14 (+206d) |  | 100% → 50% | resources Тимлид → Руководитель проекта / тимлид; baseline start none → 2026-09-01; baseline finish none → 2026-09-14 |
| 4 | Подготовка отчетной документации | 2026-02-16 → 2027-01-05 (+323d) | 2026-02-18 → 2027-01-07 (+323d) |  | 100% → 0% | resources Тимлид → Руководитель проекта / тимлид; baseline start none → 2027-01-05; baseline finish none → 2027-01-07 |
| 5 | **Анализ и обследование** | 2026-02-23 → 2026-09-01 A (+190d) | 2026-03-17 → 2026-09-14 A (+181d) | 17d → 10d | 91% → 100% | baseline start none → 2026-09-01; baseline finish none → 2026-09-14 |
| 6 | Изучение производственных и логистических процессов | 2026-02-23 → 2026-09-01 A (+190d) | 2026-03-17 → 2026-09-07 A (+174d) | 17d → 5d |  | baseline start none → 2026-09-01; baseline finish none → 2026-09-07 |
| 7 | Сбор требований к функционалу | 2026-02-23 → 2026-09-03 A (+192d) | 2026-02-27 → 2026-09-09 A (+194d) |  | 50% → 100% | baseline start none → 2026-09-03; baseline finish none → 2026-09-09 |
| 8 | Формирование технического задания (ТЗ) | 2026-02-23 → 2026-09-08 A (+197d) | 2026-02-27 → 2026-09-14 A (+199d) |  |  | baseline start none → 2026-09-08; baseline finish none → 2026-09-14 |
| 9 | ТЗ Утверждено | 2026-02-23 → 2026-09-14 A (+203d) | 2026-03-17 → 2026-09-14 A (+181d) | 17d → 0d | 88% → 100% | baseline start none → 2026-09-14; baseline finish none → 2026-09-14 |
| 10 | **Проектирование** | 2026-02-23 → 2026-09-15 A (+204d) | 2026-09-01 → 2026-09-28 (+27d) | 136d → 10d | 100% → 50% | baseline start none → 2026-09-15; baseline finish none → 2026-09-28 |
| 11 | Проектирование архитектуры и интеграционного слоя | 2026-03-06 → 2026-09-15 A (+193d) | 2026-03-19 → 2026-09-28 (+193d) |  | 100% → 50% | resources Архитектор → Архитектор / Backend / Data Engineer; baseline start none → 2026-09-15; baseline finish none → 2026-09-28 |
| 12 | Проектирование экономической модели | 2026-02-23 → 2026-09-15 A (+204d) | 2026-02-23 → 2026-09-17 (+206d) | 0d → 2.5d | 100% → 50% | baseline start none → 2026-09-15; baseline finish none → 2026-09-17 |
| 13 | Разработка математических моделей оптимизации | 2026-03-06 → 2026-09-15 A (+193d) | 2026-03-19 → 2026-09-28 (+193d) |  | 100% → 50% | resources Data Scientist → Data Scientist / ML-специалист; baseline start none → 2026-09-15; baseline finish none → 2026-09-28 |
| 14 | Проектирование завершено | 2026-02-23 → 2026-09-28 (+217d) | 2026-09-01 → 2026-09-28 (+27d) |  |  | baseline start none → 2026-09-28; baseline finish none → 2026-09-28 |
| 15 | **Разработка и интеграция** | 2026-02-23 → 2026-09-29 A (+218d) | 2026-04-15 → 2026-12-10 (+239d) | 38d → 53d | 100% → 25% | baseline start none → 2026-09-29; baseline finish none → 2026-12-10 |
| 16 | Разработка интеграционного слоя | 2026-02-23 → 2026-09-29 A (+218d) | 2026-03-27 → 2026-11-02 (+220d) |  | 100% → 25% | resources Архитектор → Архитектор / Backend / Data Engineer; baseline start none → 2026-09-29; baseline finish none → 2026-11-02 |
| 17 | Разработка слоя хранения данных (MDM/DWH) | 2026-02-23 → 2026-09-29 A (+218d) | 2026-03-13 → 2026-10-19 (+220d) |  | 100% → 25% | resources Архитектор → Архитектор / Backend / Data Engineer; baseline start none → 2026-09-29; baseline finish none → 2026-10-19 |
| 18 | Реализация модуля экономической модели | 2026-03-02 → 2026-10-20 (+232d) | 2026-03-20 → 2026-11-09 (+234d) |  | 100% → 0% | resources Архитектор → Архитектор / Backend / Data Engineer; baseline start none → 2026-10-20; baseline finish none → 2026-11-09 |
| 19 | Реализация модуля ИИ-планирования (сценарии) | 2026-03-09 → 2026-10-02 A (+207d) | 2026-04-10 → 2026-11-05 (+209d) |  | 100% → 25% | resources Data Scientist → Data Scientist / ML-специалист; baseline start none → 2026-10-02; baseline finish none → 2026-11-05 |
| 20 | Разработка веб-интерфейсов и панелей | 2026-03-16 → 2026-11-10 (+239d) | 2026-04-15 → 2026-12-10 (+239d) |  | 100% → 0% | baseline start none → 2026-11-10; baseline finish none → 2026-12-10 |
| 21 | MVP завершен | 2026-03-23 → 2026-12-10 (+262d) | 2026-03-23 → 2026-12-10 (+262d) |  | 100% → 0% | baseline start none → 2026-12-10; baseline finish none → 2026-12-10 |
| 22 | **Тестирование и внедрение** | 2026-09-01 → 2026-09-29 A (+28d) | 2026-10-22 → 2027-01-21 (+91d) | 38d → 83d | 0% → 12% | baseline start none → 2026-09-29; baseline finish none → 2027-01-21 |
| 23 | Настройка тестовых сред (инфраструктура) | 2026-09-01 → 2026-09-29 A (+28d) | 2026-09-10 → 2026-10-08 A (+28d) |  | 0% → 100% | resources DevOps → DevOps / инженер по интеграции; baseline start none → 2026-09-29; baseline finish none → 2026-10-08 |
| 24 | Функциональное и интеграционное тестирование | 2026-09-11 → 2026-12-11 (+91d) | 2026-10-08 → 2027-01-07 (+91d) |  |  | baseline start none → 2026-12-11; baseline finish none → 2027-01-07 |
| 25 | Развертывание системы (пилотные внедрения) | 2026-10-09 → 2027-01-08 (+91d) | 2026-10-22 → 2027-01-21 (+91d) |  |  | resources DevOps → DevOps / инженер по интеграции; baseline start none → 2027-01-08; baseline finish none → 2027-01-21 |
| 26 | Пилот запущен | 2026-10-22 → 2027-01-21 (+91d) | 2026-10-22 → 2027-01-21 (+91d) |  |  | baseline start none → 2027-01-21; baseline finish none → 2027-01-21 |
| 27 | Буферная работа (непредвиденные сбои на пилотах) | 2026-10-23 → 2027-01-22 (+91d) | 2026-11-03 → 2027-02-02 (+91d) |  | 0% → 50% | resources DevOps → DevOps / инженер по интеграции; baseline start none → 2027-01-22; baseline finish none → 2027-02-02 |
| 28 | Пилот завершен | 2026-11-03 → 2027-02-02 (+91d) | 2026-11-03 → 2027-02-02 (+91d) |  |  | baseline start none → 2027-02-02; baseline finish none → 2027-02-02 |
